# Children's Book Schedule

How a schedule from MS Project changed from version to version. A marks actual dates.

## Version 1 (saved 2025-09-22)

| ID | WBS | Task | Duration | Start | Finish | Predecessors | Complete | Total float | Constraint |
| --- | --- | --- | --- | --- | --- | --- | --- | --- | --- |
| 1 | 1 | **Hợp nhân viên biên tập** | 780.12d | 2012-04-23 08:00 A | 2015-04-20 09:00 |  | 15% | 158.75d |  |
| 2 |  | Hợp nhân viên biên tập 1 | 1h | 2015-04-13 08:00 A | 2015-04-13 09:00 A |  | 100% |  | start no earlier than 2015-04-13 08:00 |
| 3 |  | Hợp nhân viên biên tập 2 | 1h | 2015-04-20 08:00 A | 2015-04-20 09:00 A |  | 100% |  | start no earlier than 2015-04-20 08:00 |
| 4 |  | Hợp nhân viên biên tập 3 | 1h | 2012-04-23 08:00 | 2012-04-23 09:00 |  |  | 938.75d | start no earlier than 2012-04-23 08:00 |
| 5 |  | Hợp nhân viên biên tập 4 | 1h | 2012-04-30 08:00 | 2012-04-30 09:00 |  |  | 933.75d | start no earlier than 2012-04-30 08:00 |
| 6 |  | Hợp nhân viên biên tập 5 | 1h | 2012-05-07 08:00 | 2012-05-07 09:00 |  |  | 928.75d | start no earlier than 2012-05-07 08:00 |
| 7 |  | Hợp nhân viên biên tập 6 | 1h | 2012-05-14 08:00 | 2012-05-14 09:00 |  |  | 923.75d | start no earlier than 2012-05-14 08:00 |
| 8 |  | Hợp nhân viên biên tập 7 | 1h | 2012-05-21 08:00 | 2012-05-21 09:00 |  |  | 918.75d | start no earlier than 2012-05-21 08:00 |
| 9 |  | Hợp nhân viên biên tập 8 | 1h | 2012-05-28 08:00 | 2012-05-28 09:00 |  |  | 913.75d | start no earlier than 2012-05-28 08:00 |
| 10 |  | Hợp nhân viên biên tập 9 | 1h | 2012-06-04 08:00 | 2012-06-04 09:00 |  |  | 908.75d | start no earlier than 2012-06-04 08:00 |
| 11 |  | Hợp nhân viên biên tập 10 | 1h | 2012-06-11 08:00 | 2012-06-11 09:00 |  |  | 903.75d | start no earlier than 2012-06-11 08:00 |
| 12 |  | Hợp nhân viên biên tập 11 | 1h | 2012-06-18 08:00 | 2012-06-18 09:00 |  |  | 898.75d | start no earlier than 2012-06-18 08:00 |
| 13 |  | Hợp nhân viên biên tập 12 | 1h | 2012-06-25 08:00 | 2012-06-25 09:00 |  |  | 893.75d | start no earlier than 2012-06-25 08:00 |
| 14 |  | Hợp nhân viên biên tập 13 | 1h | 2012-07-02 08:00 | 2012-07-02 09:00 |  |  | 888.75d | start no earlier than 2012-07-02 08:00 |
| 15 | 2 | **Sự tiếp nhận** | 35.5d | 2015-04-06 08:00 A | 2015-05-25 12:00 |  | 58% | 0d |  |
| 16 |  | Nhận bản thảo | 0d | 2015-04-06 08:00 A | 2015-04-06 08:00 A |  | 100% |  |  |
| 17 |  | Biên tập nội dung | 15d | 2015-04-06 08:00 A | 2015-04-30 10:00 A | 16 | 100% |  |  |
| 18 |  | Đánh giá tác phẩm gốc | 10.25d | 2015-04-23 10:00 A | 2015-05-07 12:00 | 17FS-5d | 66% | 0d |  |
| 19 |  | Đánh giá của tác giả về nội dung biên tập | 12d | 2015-05-07 13:00 | 2015-05-25 12:00 | 17, 18 |  | 0d |  |
| 20 |  | Bàn giao cho bộ phận biên tập | 0d | 2015-05-25 12:00 | 2015-05-25 12:00 | 19 |  | 0d |  |
| 21 | 3 | **Biên tập** | 29.12d | 2015-05-25 13:00 | 2015-07-03 14:00 | 15 |  | 0d |  |
| 22 |  | Sắp xếp bản thảo cho bản sao | 5.12d | 2015-05-25 13:00 | 2015-06-01 14:00 |  |  | 0d |  |
| 23 |  | Bản sao | 11.25d | 2015-06-01 14:00 | 2015-06-16 16:00 | 22 |  | 0d |  |
| 24 |  | Đánh giá của tác giả về bản sao | 10d | 2015-06-16 16:00 | 2015-06-30 16:00 | 23 |  | 0d |  |
| 25 |  | Kết hợp bản sao | 5.12d | 2015-06-26 11:00 | 2015-07-03 14:00 | 24FS-2.5% |  | 0d |  |
| 26 |  | Bàn giao cho bộ phận sản xuất | 0d | 2015-07-03 14:00 | 2015-07-03 14:00 | 25 |  | 0d |  |
| 27 | 4 | **Thiết kế và sản xuất** | 58.25d | 2015-07-03 14:00 | 2015-09-23 16:00 | 21 |  | 0d |  |
| 28 |  | Thiết lập trang | 15d | 2015-07-03 14:00 | 2015-07-24 14:00 |  |  | 0d |  |
| 29 |  | Thiết kế nội dung minh họa | 15.25d | 2015-07-03 14:00 | 2015-07-24 16:00 | 28SS |  | 0d |  |
| 30 | 4.3 | **Đánh giá trang thứ nhất** | 30d | 2015-07-24 16:00 | 2015-09-04 16:00 | 29 |  | 0d |  |
| 31 |  | Hiệu đính vfa lập chỉ mục | 10d | 2015-07-24 16:00 | 2015-08-07 16:00 |  |  | 0d | start no earlier than 2015-07-17 08:00 |
| 32 |  | Incorporate 1st Pages review | 10d | 2015-08-07 16:00 | 2015-08-21 16:00 | 31 |  | 0d |  |
| 33 |  | Send proofed pages to Production | 0d | 2015-08-21 16:00 | 2015-08-21 16:00 | 32 |  | 0d |  |
| 34 |  | Enter page corrections and index | 5d | 2015-08-21 16:00 | 2015-08-28 16:00 | 33 |  | 0d |  |
| 35 |  | Cover design | 5d | 2015-08-28 16:00 | 2015-09-04 16:00 | 34 |  | 0d |  |
| 36 | 4.4 | **2nd Pages review** | 13d | 2015-09-04 16:00 | 2015-09-23 16:00 |  |  | 0d |  |
| 37 |  | Proof and review | 6.5d | 2015-09-04 16:00 | 2015-09-15 11:00 | 35 |  | 0d |  |
| 38 |  | Send proofed pages to Production | 0d | 2015-09-15 11:00 | 2015-09-15 11:00 | 37 |  | 0d |  |
| 39 |  | Final review | 5d | 2015-09-16 16:00 | 2015-09-23 16:00 | 38 |  | 0d |  |
| 40 | 4.5 | **Design book's companion website** | 10d | 2015-09-04 16:00 | 2015-09-18 16:00 | 30 |  | 3d |  |
| 41 |  | Create mockup | 4.5d | 2015-09-04 16:00 | 2015-09-16 16:00 |  |  | 3d |  |
| 42 |  | Review with author | 2d | 2015-09-16 16:00 | 2015-09-18 16:00 | 41 |  | 3d |  |
| 43 | 5 | **Color prep and printing** | 46d | 2015-09-23 16:00 | 2015-11-26 16:00 | 40 |  | 0d |  |
| 44 |  | Send to color house | 1d | 2015-09-23 16:00 | 2015-09-28 16:00 | 36 |  | 0d |  |
| 45 |  | Generate proofs | 10d | 2015-09-28 16:00 | 2015-10-12 16:00 | 44 |  | 0d |  |
| 46 |  | Print and ship | 30d | 2015-10-15 16:00 | 2015-11-26 16:00 | 45FS+3d |  | 0d |  |
| 47 | 6 | **Book launch prep** | 22d | 2015-09-28 16:00 | 2015-10-28 16:00 |  |  | 21d |  |
| 48 |  | Launch planning | 5d | 2015-09-28 16:00 | 2015-10-05 16:00 | 44 |  | 21d |  |
| 49 |  | Assign launch team members | 1d | 2015-10-05 16:00 | 2015-10-06 16:00 | 48 |  | 21d |  |
| 50 |  | Complete author questionnaire | 5d | 2015-10-06 16:00 | 2015-10-13 16:00 | 49 |  | 21d |  |
| 51 |  | Schedule author interviews | 1d | 2015-10-13 16:00 | 2015-10-14 16:00 | 50 |  | 21d |  |
| 52 |  | Design and order marketing material | 10d | 2015-10-14 16:00 | 2015-10-28 16:00 | 51 |  | 21d |  |

## Version 2 (saved 2025-09-26)

Last finish stays 2015-11-26.

Changed:

| ID | Task | Other |
| --- | --- | --- |
| 32 | Kết hợp đánh giá Trang 1 | was named Incorporate 1st Pages review |
| 33 | Gửi các trang đã được hiệu đính đến Phòng Sản xuất | was named Send proofed pages to Production |
| 34 | Nhập các chỉnh sửa trang và mục lục | was named Enter page corrections and index |
| 35 | Thiết kế bìa | was named Cover design |
| 36 | **Đánh giá Trang thứ hai** | was named 2nd Pages review |
| 37 | Đánh giá và hiệu đính | was named Proof and review |
| 38 | Gửi các trang đã hiệu đính cho Sản xuất | was named Send proofed pages to Production |
| 39 | Đánh giá cuối cùng | was named Final review |
| 40 | **Trang web đi kèm của sách Thiết kế** | was named Design book's companion website |
| 41 | Tạo bản mẫu | was named Create mockup |
| 42 | Đánh giá với tác giả | was named Review with author |
| 43 | **Chuẩn bị màu và in ấn** | was named Color prep and printing |
| 44 | Gửi đến nhà màu | was named Send to color house |
| 45 | Tạo bằng chứng | was named Generate proofs |
| 46 | In và gửi | was named Print and ship |
| 47 | **Chuẩn bị ra mắt sách** | was named Book launch prep |
| 48 | Kế hoạch ra mắt | was named Launch planning |
| 49 | Chỉ định các thành viên nhóm ra mắt | was named Assign launch team members |
| 50 | Hoàn thành bảng câu hỏi của tác giả | was named Complete author questionnaire |
| 51 | Lên lịch phỏng vấn tác giả | was named Schedule author interviews |
| 52 | Thiết kế và đặt hàng tài liệu tiếp thị | was named Design and order marketing material |
