# Lịch sách dành cho trẻ em

How a schedule from MS Project changed from version to version. A marks actual dates.

## Version 1 (saved 2025-09-22, file Advanced Tracking A_Start.mpp)

| ID | WBS | Task | Duration | Start | Finish | Predecessors | Total float | Constraint |
| --- | --- | --- | --- | --- | --- | --- | --- | --- |
| 1 | 1 | **Họp nhân viên biên tập** | 60.12d | 2012-04-09 08:00 | 2012-07-02 09:00 |  | 888.75d |  |
| 2 |  | Họp nhân viên biên tập 1 | 1h | 2012-04-09 08:00 | 2012-04-09 09:00 |  | 948.75d | start no earlier than 2012-04-09 08:00 |
| 3 |  | Họp nhân viên biên tập 2 | 1h | 2012-04-16 08:00 | 2012-04-16 09:00 |  | 943.75d | start no earlier than 2012-04-16 08:00 |
| 4 |  | Họp nhân viên biên tập 3 | 1h | 2012-04-23 08:00 | 2012-04-23 09:00 |  | 938.75d | start no earlier than 2012-04-23 08:00 |
| 5 |  | Họp nhân viên biên tập 4 | 1h | 2012-04-30 08:00 | 2012-04-30 09:00 |  | 933.75d | start no earlier than 2012-04-30 08:00 |
| 6 |  | Họp nhân viên biên tập 5 | 1h | 2012-05-07 08:00 | 2012-05-07 09:00 |  | 928.75d | start no earlier than 2012-05-07 08:00 |
| 7 |  | Họp nhân viên biên tập 6 | 1h | 2012-05-14 08:00 | 2012-05-14 09:00 |  | 923.75d | start no earlier than 2012-05-14 08:00 |
| 8 |  | Họp nhân viên biên tập 7 | 1h | 2012-05-21 08:00 | 2012-05-21 09:00 |  | 918.75d | start no earlier than 2012-05-21 08:00 |
| 9 |  | Họp nhân viên biên tập 8 | 1h | 2012-05-28 08:00 | 2012-05-28 09:00 |  | 913.75d | start no earlier than 2012-05-28 08:00 |
| 10 |  | Họp nhân viên biên tập 9 | 1h | 2012-06-04 08:00 | 2012-06-04 09:00 |  | 908.75d | start no earlier than 2012-06-04 08:00 |
| 11 |  | Họp nhân viên biên tập 10 | 1h | 2012-06-11 08:00 | 2012-06-11 09:00 |  | 903.75d | start no earlier than 2012-06-11 08:00 |
| 12 |  | Họp nhân viên biên tập 11 | 1h | 2012-06-18 08:00 | 2012-06-18 09:00 |  | 898.75d | start no earlier than 2012-06-18 08:00 |
| 13 |  | Họp nhân viên biên tập 12 | 1h | 2012-06-25 08:00 | 2012-06-25 09:00 |  | 893.75d | start no earlier than 2012-06-25 08:00 |
| 14 |  | Họp nhân viên biên tập 13 | 1h | 2012-07-02 08:00 | 2012-07-02 09:00 |  | 888.75d | start no earlier than 2012-07-02 08:00 |
| 15 | 2 | **Sự tiếp nhận** | 35.5d | 2015-04-06 08:00 | 2015-05-25 12:00 |  | 0d |  |
| 16 |  | Nhận bản thảo | 0d | 2015-04-06 08:00 | 2015-04-06 08:00 |  | 0d |  |
| 17 |  | Biên tập nội dung | 15d | 2015-04-06 08:00 | 2015-04-30 10:00 | 16 | 0d |  |
| 18 |  | Đánh giá tác phẩm gốc | 10.25d | 2015-04-23 10:00 | 2015-05-07 12:00 | 17FS-5d | 0d |  |
| 19 |  | Đánh giá của tác giả về nội dung biên tập | 12d | 2015-05-07 13:00 | 2015-05-25 12:00 | 17, 18 | 0d |  |
| 20 |  | Bàn giao cho bộ phận biên tập | 0d | 2015-05-25 12:00 | 2015-05-25 12:00 | 19 | 0d |  |
| 21 | 3 | **Biên tập** | 29.12d | 2015-05-25 13:00 | 2015-07-03 14:00 | 15 | 0d |  |
| 22 |  | Sắp xếp bản thảo cho bản sao | 5.12d | 2015-05-25 13:00 | 2015-06-01 14:00 |  | 0d |  |
| 23 |  | Bản sao | 11.25d | 2015-06-01 14:00 | 2015-06-16 16:00 | 22 | 0d |  |
| 24 |  | Đánh giá của tác giả về bản sao | 10d | 2015-06-16 16:00 | 2015-06-30 16:00 | 23 | 0d |  |
| 25 |  | Kết hợp bản sao | 5.12d | 2015-06-26 11:00 | 2015-07-03 14:00 | 24FS-2.5% | 0d |  |
| 26 |  | Bàn giao cho bộ phận sản xuất | 0d | 2015-07-03 14:00 | 2015-07-03 14:00 | 25 | 0d |  |
| 27 | 4 | **Thiết kế và sản xuất** | 58.25d | 2015-07-03 14:00 | 2015-09-23 16:00 | 21 | 0d |  |
| 28 |  | Thiết lập trang | 15d | 2015-07-03 14:00 | 2015-07-24 14:00 |  | 0d |  |
| 29 |  | Thiết kế minh họa nội dung | 15.25d | 2015-07-03 14:00 | 2015-07-24 16:00 | 28SS | 0d |  |
| 30 | 4.3 | **Đánh giá trang thứ nhất** | 30d | 2015-07-24 16:00 | 2015-09-04 16:00 | 29 | 0d |  |
| 31 |  | Hiệu đính và lập chỉ mục | 10d | 2015-07-24 16:00 | 2015-08-07 16:00 |  | 0d | start no earlier than 2015-07-17 08:00 |
| 32 |  | Incorporate 1st Pages review | 10d | 2015-08-07 16:00 | 2015-08-21 16:00 | 31 | 0d |  |
| 33 |  | Send proofed pages to Production | 0d | 2015-08-21 16:00 | 2015-08-21 16:00 | 32 | 0d |  |
| 34 |  | Enter page corrections and index | 5d | 2015-08-21 16:00 | 2015-08-28 16:00 | 33 | 0d |  |
| 35 |  | Cover design | 5d | 2015-08-28 16:00 | 2015-09-04 16:00 | 34 | 0d |  |
| 36 | 4.4 | **2nd Pages review** | 13d | 2015-09-04 16:00 | 2015-09-23 16:00 |  | 0d |  |
| 37 |  | Proof and review | 6.5d | 2015-09-04 16:00 | 2015-09-15 11:00 | 35 | 0d |  |
| 38 |  | Send proofed pages to Production | 0d | 2015-09-15 11:00 | 2015-09-15 11:00 | 37 | 0d |  |
| 39 |  | Final review | 5d | 2015-09-16 16:00 | 2015-09-23 16:00 | 38 | 0d |  |
| 40 | 4.5 | **Design book's companion website** | 10d | 2015-09-04 16:00 | 2015-09-18 16:00 | 30 | 3d |  |
| 41 |  | Create mockup | 4.5d | 2015-09-04 16:00 | 2015-09-16 16:00 |  | 3d |  |
| 42 |  | Review with author | 2d | 2015-09-16 16:00 | 2015-09-18 16:00 | 41 | 3d |  |
| 43 | 5 | **Color prep and printing** | 46d | 2015-09-23 16:00 | 2015-11-26 16:00 | 40 | 0d |  |
| 44 |  | Send to color house | 1d | 2015-09-23 16:00 | 2015-09-28 16:00 | 36 | 0d |  |
| 45 |  | Generate proofs | 10d | 2015-09-28 16:00 | 2015-10-12 16:00 | 44 | 0d |  |
| 46 |  | Print and ship | 30d | 2015-10-15 16:00 | 2015-11-26 16:00 | 45FS+3d | 0d |  |
| 47 | 6 | **Book launch prep** | 22d | 2015-09-28 16:00 | 2015-10-28 16:00 |  | 21d |  |
| 48 |  | Launch planning | 5d | 2015-09-28 16:00 | 2015-10-05 16:00 | 44 | 21d |  |
| 49 |  | Assign launch team members | 1d | 2015-10-05 16:00 | 2015-10-06 16:00 | 48 | 21d |  |
| 50 |  | Complete author questionnaire | 5d | 2015-10-06 16:00 | 2015-10-13 16:00 | 49 | 21d |  |
| 51 |  | Schedule author interviews | 1d | 2015-10-13 16:00 | 2015-10-14 16:00 | 50 | 21d |  |
| 52 |  | Design and order marketing material | 10d | 2015-10-14 16:00 | 2015-10-28 16:00 | 51 | 21d |  |

## Version 2 (saved 2025-09-22, file Advanced Tracking C_Start.mpp)

Last finish stays 2015-11-26. Complete tasks 0 → 14.

Changed:

| ID | Task | Start | Finish | Duration | Complete | Total float | Other |
| --- | --- | --- | --- | --- | --- | --- | --- |
| 1 | **Họp nhân viên biên tập** | 2012-04-09 08:00 → 2012-05-28 08:00 A (+49d) | 2012-07-02 09:00 → 2015-05-25 09:00 (+1057d) | 60.12d → 780.12d | 0% → 54% | 888.75d → 133.88d | baseline start 2012-04-09 08:00 → 2015-04-13 08:00; baseline finish 2012-07-02 09:00 → 2015-07-06 09:00 |
| 2 | Họp nhân viên biên tập 1 | 2012-04-09 08:00 → 2015-04-13 08:00 A (+1099d) | 2012-04-09 09:00 → 2015-04-13 09:00 A (+1099d) |  | 0% → 100% | 948.75d → none | constraint start no earlier than 2012-04-09 08:00 → start no earlier than 2015-04-13 08:00; resources Võ Anh Kiệt; Nguyên Cao; Nguyên Vũ; Ngô Bá Khá [50%] → Nguyễn A; Nguyễn Tài; Nguyễn C; Nguyễn B [50%]; baseline start 2012-04-09 08:00 → 2015-04-13 08:00; baseline finish 2012-04-09 09:00 → 2015-04-13 09:00 |
| 3 | Họp nhân viên biên tập 2 | 2012-04-16 08:00 → 2015-04-20 08:00 A (+1099d) | 2012-04-16 09:00 → 2015-04-20 09:00 A (+1099d) |  | 0% → 100% | 943.75d → none | constraint start no earlier than 2012-04-16 08:00 → start no earlier than 2015-04-20 08:00; resources Võ Anh Kiệt; Nguyên Cao; Nguyên Vũ; Ngô Bá Khá [50%] → Nguyễn A; Nguyễn Tài; Nguyễn C; Nguyễn B [50%]; baseline start 2012-04-16 08:00 → 2015-04-20 08:00; baseline finish 2012-04-16 09:00 → 2015-04-20 09:00 |
| 4 | Họp nhân viên biên tập 3 | 2012-04-23 08:00 → 2015-04-27 08:00 A (+1099d) | 2012-04-23 09:00 → 2015-04-27 09:00 A (+1099d) |  | 0% → 100% | 938.75d → none | constraint start no earlier than 2012-04-23 08:00 → start no earlier than 2015-04-27 08:00; resources Võ Anh Kiệt; Nguyên Cao; Nguyên Vũ; Ngô Bá Khá [50%] → Nguyễn A; Nguyễn Tài; Nguyễn C; Nguyễn B [50%]; baseline start 2012-04-23 08:00 → 2015-04-27 08:00; baseline finish 2012-04-23 09:00 → 2015-04-27 09:00 |
| 5 | Họp nhân viên biên tập 4 | 2012-04-30 08:00 → 2015-05-04 08:00 A (+1099d) | 2012-04-30 09:00 → 2015-05-04 09:00 A (+1099d) |  | 0% → 100% | 933.75d → none | constraint start no earlier than 2012-04-30 08:00 → start no earlier than 2015-05-04 08:00; resources Võ Anh Kiệt; Nguyên Cao; Nguyên Vũ; Ngô Bá Khá [50%] → Nguyễn A; Nguyễn Tài; Nguyễn C; Nguyễn B [50%]; baseline start 2012-04-30 08:00 → 2015-05-04 08:00; baseline finish 2012-04-30 09:00 → 2015-05-04 09:00 |
| 6 | Họp nhân viên biên tập 5 | 2012-05-07 08:00 → 2015-05-11 08:00 A (+1099d) | 2012-05-07 09:00 → 2015-05-11 09:00 A (+1099d) |  | 0% → 100% | 928.75d → none | constraint start no earlier than 2012-05-07 08:00 → start no earlier than 2015-05-11 08:00; resources Võ Anh Kiệt; Nguyên Cao; Nguyên Vũ; Ngô Bá Khá [50%] → Nguyễn A; Nguyễn Tài; Nguyễn C; Nguyễn B [50%]; baseline start 2012-05-07 08:00 → 2015-05-11 08:00; baseline finish 2012-05-07 09:00 → 2015-05-11 09:00 |
| 7 | Họp nhân viên biên tập 6 | 2012-05-14 08:00 → 2015-05-18 08:00 A (+1099d) | 2012-05-14 09:00 → 2015-05-18 09:00 A (+1099d) |  | 0% → 100% | 923.75d → none | constraint start no earlier than 2012-05-14 08:00 → start no earlier than 2015-05-18 08:00; resources Võ Anh Kiệt; Nguyên Cao; Nguyên Vũ; Ngô Bá Khá [50%] → Nguyễn A; Nguyễn Tài; Nguyễn C; Nguyễn B [50%]; baseline start 2012-05-14 08:00 → 2015-05-18 08:00; baseline finish 2012-05-14 09:00 → 2015-05-18 09:00 |
| 8 | Họp nhân viên biên tập 7 | 2012-05-21 08:00 → 2015-05-25 08:00 A (+1099d) | 2012-05-21 09:00 → 2015-05-25 09:00 A (+1099d) |  | 0% → 100% | 918.75d → none | constraint start no earlier than 2012-05-21 08:00 → start no earlier than 2015-05-25 08:00; resources Võ Anh Kiệt; Nguyên Cao; Nguyên Vũ; Ngô Bá Khá [50%] → Nguyễn A; Nguyễn Tài; Nguyễn C; Nguyễn B [50%]; baseline start 2012-05-21 08:00 → 2015-05-25 08:00; baseline finish 2012-05-21 09:00 → 2015-05-25 09:00 |
| 9 | Họp nhân viên biên tập 8 |  |  |  |  | 913.75d → 913.88d | resources Võ Anh Kiệt; Nguyên Cao; Nguyên Vũ; Ngô Bá Khá [50%] → Nguyễn A; Nguyễn Tài; Nguyễn C; Nguyễn B [50%]; baseline start 2012-05-28 08:00 → 2015-06-01 08:00; baseline finish 2012-05-28 09:00 → 2015-06-01 09:00 |
| 10 | Họp nhân viên biên tập 9 |  |  |  |  | 908.75d → 908.88d | resources Võ Anh Kiệt; Nguyên Cao; Nguyên Vũ; Ngô Bá Khá [50%] → Nguyễn A; Nguyễn Tài; Nguyễn C; Nguyễn B [50%]; baseline start 2012-06-04 08:00 → 2015-06-08 08:00; baseline finish 2012-06-04 09:00 → 2015-06-08 09:00 |
| 11 | Họp nhân viên biên tập 10 |  |  |  |  | 903.75d → 903.88d | resources Võ Anh Kiệt; Nguyên Cao; Nguyên Vũ; Ngô Bá Khá [50%] → Nguyễn A; Nguyễn Tài; Nguyễn C; Nguyễn B [50%]; baseline start 2012-06-11 08:00 → 2015-06-15 08:00; baseline finish 2012-06-11 09:00 → 2015-06-15 09:00 |
| 12 | Họp nhân viên biên tập 11 |  |  |  |  | 898.75d → 898.88d | resources Võ Anh Kiệt; Nguyên Cao; Nguyên Vũ; Ngô Bá Khá [50%] → Nguyễn A; Nguyễn Tài; Nguyễn C; Nguyễn B [50%]; baseline start 2012-06-18 08:00 → 2015-06-22 08:00; baseline finish 2012-06-18 09:00 → 2015-06-22 09:00 |
| 13 | Họp nhân viên biên tập 12 |  |  |  |  | 893.75d → 893.88d | resources Võ Anh Kiệt; Nguyên Cao; Nguyên Vũ; Ngô Bá Khá [50%] → Nguyễn A; Nguyễn Tài; Nguyễn C; Nguyễn B [50%]; baseline start 2012-06-25 08:00 → 2015-06-29 08:00; baseline finish 2012-06-25 09:00 → 2015-06-29 09:00 |
| 14 | Họp nhân viên biên tập 13 |  |  |  |  | 888.75d → 888.88d | resources Võ Anh Kiệt; Nguyên Cao; Nguyên Vũ; Ngô Bá Khá [50%] → Nguyễn A; Nguyễn Tài; Nguyễn C; Nguyễn B [50%]; baseline start 2012-07-02 08:00 → 2015-07-06 08:00; baseline finish 2012-07-02 09:00 → 2015-07-06 09:00 |
| 15 | **Sự tiếp nhận** | 2015-04-06 08:00 A | 2015-05-25 12:00 → 2015-05-26 17:00 A (+1d) | 35.5d → 37d | 0% → 100% | 0d → none |  |
| 16 | Nhận bản thảo | 2015-04-06 08:00 A | 2015-04-06 08:00 A |  | 0% → 100% | 0d → none |  |
| 17 | Biên tập nội dung | 2015-04-06 08:00 A | 2015-04-30 10:00 A |  | 0% → 100% | 0d → none | resources Võ Anh Kiệt → Nguyễn A |
| 18 | Đánh giá tác phẩm gốc | 2015-04-23 10:00 A | 2015-05-07 12:00 A |  | 0% → 100% | 0d → none | resources Nguyên Vũ; Đan Phương → Nguyễn C; Nguyễn D |
| 19 | Đánh giá của tác giả về nội dung biên tập | 2015-05-07 13:00 A | 2015-05-25 12:00 → 2015-05-26 17:00 A (+1d) | 12d → 13.5d | 0% → 100% | 0d → none | resources Nguyên Ngô; Biên tập bản sao → Nguyễn Hài; Biên tập bản sao |
| 20 | Bàn giao cho bôj phận biên tập | 2015-05-25 12:00 → 2015-05-26 17:00 A (+1d) | 2015-05-25 12:00 → 2015-05-26 17:00 A (+1d) |  | 0% → 100% | 0d → none | was named Bàn giao cho bộ phận biên tập; resources Võ Anh Kiệt → Nguyễn A |
| 21 | **Biên tập** | 2015-05-25 13:00 → 2015-05-27 08:00 A (+2d) | 2015-07-03 14:00 → 2015-07-03 17:00 | 29.12d → 28d | 0% → 50% | 0d → 1.75d |  |
| 22 | Sắp xếp bản thảo cho bản sao | 2015-05-25 13:00 → 2015-05-27 08:00 A (+2d) | 2015-06-01 14:00 → 2015-06-02 17:00 A (+1d) | 5.12d → 5d | 0% → 100% | 0d → none | resources Nguyên Vũ; Ngô Bá Khá [50%] → Nguyễn C; Nguyễn B [50%] |
| 23 | Bản sao | 2015-06-01 14:00 → 2015-06-03 08:00 A (+2d) | 2015-06-16 16:00 → 2015-06-17 10:00 A (+1d) | 11.25d → 10.25d | 0% → 100% | 0d → none |  |
| 24 | Đánh giá của tác giả về bản sao | 2015-06-16 16:00 → 2015-06-17 10:00 (+1d) | 2015-06-30 16:00 → 2015-07-01 10:00 (+1d) |  |  | 0d → 1.75d | resources Nguyên Ngô; Biên tập bản sao [25%] → Nguyễn Hài; Biên tập bản sao [25%] |
| 25 | Kết hợp bản sao | 2015-06-26 11:00 → 2015-06-26 15:00 | 2015-07-03 14:00 → 2015-07-03 17:00 |  |  | 0d → 1.75d | resources Võ Anh Kiệt; Ngô Bá Khá [50%] → Nguyễn A; Nguyễn B [50%] |
| 26 | Bàn giao cho bộ phận sản xuất | 2015-07-03 14:00 → 2015-07-03 17:00 | 2015-07-03 14:00 → 2015-07-03 17:00 |  |  | 0d → 1.75d | resources Nguyên Vũ → Nguyễn C |
| 27 | **Thiết kế và sản xuất** | 2015-07-03 14:00 → 2015-07-06 08:00 (+3d) | 2015-09-23 16:00 → 2015-09-23 17:00 | 58.25d → 58d |  | 0d → 1.75d |  |
| 28 | Thiết lập trang | 2015-07-03 14:00 → 2015-07-06 08:00 (+3d) | 2015-07-24 14:00 → 2015-07-24 17:00 |  |  | 0d → 1.75d | resources Đan Phương → Nguyễn D |
| 29 | Thiết kế nội dung minh họa | 2015-07-03 14:00 → 2015-07-06 08:00 (+3d) | 2015-07-24 16:00 → 2015-07-27 10:00 (+3d) |  |  | 0d → 1.75d | was named Thiết kế minh họa nội dung; resources Phương Thanh; Nguyên Vũ → Võ Anh Kiệt; Nguyễn C |
| 30 | **Đánh giá trang thứ nhất** | 2015-07-24 16:00 → 2015-07-27 10:00 (+3d) | 2015-09-04 16:00 → 2015-09-07 10:00 (+3d) |  |  | 0d → 1.75d |  |
| 31 | Proofread and index | 2015-07-24 16:00 → 2015-07-27 10:00 (+3d) | 2015-08-07 16:00 → 2015-08-10 10:00 (+3d) |  |  | 0d → 1.75d | was named Hiệu đính và lập chỉ mục; resources Nguyên Ngô; Biên tập bản sao → Nguyễn Hài; Biên tập bản sao |
| 32 | Incorporate 1st Pages review | 2015-08-07 16:00 → 2015-08-10 10:00 (+3d) | 2015-08-21 16:00 → 2015-08-24 10:00 (+3d) |  |  | 0d → 1.75d | resources Nguyên Vũ; Ngô Bá Khá [50%] → Nguyễn C; Nguyễn B [50%] |
| 33 | Send proofed pages to Production | 2015-08-21 16:00 → 2015-08-24 10:00 (+3d) | 2015-08-21 16:00 → 2015-08-24 10:00 (+3d) |  |  | 0d → 1.75d | resources Nguyên Vũ → Nguyễn C |
| 34 | Enter page corrections and index | 2015-08-21 16:00 → 2015-08-24 10:00 (+3d) | 2015-08-28 16:00 → 2015-08-31 10:00 (+3d) |  |  | 0d → 1.75d | resources Đan Phương; Ngô Bá Khá [50%] → Nguyễn D; Nguyễn B [50%] |
| 35 | Cover design | 2015-08-28 16:00 → 2015-08-31 10:00 (+3d) | 2015-09-04 16:00 → 2015-09-07 10:00 (+3d) |  |  | 0d → 1.75d | resources Phương Thanh → Võ Anh Kiệt |
| 36 | **2nd Pages review** | 2015-09-04 16:00 → 2015-09-07 10:00 (+3d) | 2015-09-23 16:00 → 2015-09-23 17:00 | 13d → 12.75d |  | 0d → 1.75d |  |
| 37 | Proof and review | 2015-09-04 16:00 → 2015-09-07 10:00 (+3d) | 2015-09-15 11:00 → 2015-09-15 15:00 |  |  | 0d → 1.75d | resources Nguyên Vũ → Nguyễn C |
| 38 | Send proofed pages to Production | 2015-09-15 11:00 → 2015-09-15 15:00 | 2015-09-15 11:00 → 2015-09-15 15:00 |  |  | 0d → 1.75d | resources Nguyên Vũ → Nguyễn C |
| 39 | Final review | 2015-09-16 16:00 → 2015-09-17 08:00 (+1d) | 2015-09-23 16:00 → 2015-09-23 17:00 |  |  | 0d → 2d | resources Đan Phương; Nguyên Vũ [50%]; Võ Anh Kiệt [50%]; Bound galley proofs [20 copies] → Nguyễn D; Nguyễn C [50%]; Nguyễn A [50%]; Bound galley proofs [20 copies] |
| 40 | **Design book's companion website** | 2015-09-04 16:00 → 2015-09-07 10:00 (+3d) | 2015-09-18 16:00 → 2015-09-21 10:00 (+3d) |  |  | 3d → 4.75d |  |
| 41 | Create mockup | 2015-09-04 16:00 → 2015-09-07 10:00 (+3d) | 2015-09-16 16:00 → 2015-09-17 10:00 (+1d) |  |  | 3d → 4.75d | resources Phương Thanh; Nguyên Vũ → Võ Anh Kiệt; Nguyễn C |
| 42 | Review with author | 2015-09-16 16:00 → 2015-09-17 10:00 (+1d) | 2015-09-18 16:00 → 2015-09-21 10:00 (+3d) |  |  | 3d → 4.75d | resources Phương Thanh; Nguyên Ngô; Travel [0.1%]; Ngô Bá Khá [50%] → Võ Anh Kiệt; Nguyễn Hài; Travel [0.1%]; Nguyễn B [50%] |
| 43 | **Color prep and printing** | 2015-09-23 16:00 → 2015-09-28 08:00 (+5d) | 2015-11-26 16:00 → 2015-11-26 17:00 | 46d → 44d |  |  |  |
| 44 | Send to color house | 2015-09-23 16:00 → 2015-09-28 08:00 (+5d) | 2015-09-28 16:00 → 2015-09-28 17:00 |  |  |  | resources Nguyên Vũ → Nguyễn C |
| 45 | Generate proofs | 2015-09-28 16:00 → 2015-09-29 08:00 (+1d) | 2015-10-12 16:00 → 2015-10-12 17:00 |  |  |  |  |
| 46 | Print and ship | 2015-10-15 16:00 → 2015-10-16 08:00 (+1d) | 2015-11-26 16:00 → 2015-11-26 17:00 |  |  |  |  |
| 47 | **Book launch prep** | 2015-09-28 16:00 → 2015-09-29 08:00 (+1d) | 2015-10-28 16:00 → 2015-10-28 17:00 |  |  |  |  |
| 48 | Launch planning | 2015-09-28 16:00 → 2015-09-29 08:00 (+1d) | 2015-10-05 16:00 → 2015-10-05 17:00 |  |  |  | resources Võ Anh Kiệt [50%]; Đan Phương → Nguyễn A [50%]; Nguyễn D |
| 49 | Assign launch team members | 2015-10-05 16:00 → 2015-10-06 08:00 (+1d) | 2015-10-06 16:00 → 2015-10-06 17:00 |  |  |  | resources Võ Anh Kiệt → Nguyễn A |
| 50 | Complete author questionnaire | 2015-10-06 16:00 → 2015-10-07 08:00 (+1d) | 2015-10-13 16:00 → 2015-10-13 17:00 |  |  |  | resources Nguyên Vũ; Nguyên Ngô; Travel [0.1%] → Nguyễn C; Nguyễn Hài; Travel [0.1%] |
| 51 | Schedule author interviews | 2015-10-13 16:00 → 2015-10-14 08:00 (+1d) | 2015-10-14 16:00 → 2015-10-14 17:00 |  |  |  | resources Nguyên Vũ → Nguyễn C |
| 52 | Design and order marketing material | 2015-10-14 16:00 → 2015-10-15 08:00 (+1d) | 2015-10-28 16:00 → 2015-10-28 17:00 |  |  |  | resources Nguyên Vũ → Nguyễn C |

## Version 3 (saved 2025-09-26, file Advanced Tracking A_Start.mpp)

Last finish stays 2015-11-26. Complete tasks 14 → 0.

Changed:

| ID | Task | Start | Finish | Duration | Complete | Total float | Other |
| --- | --- | --- | --- | --- | --- | --- | --- |
| 1 | **Họp nhân viên biên tập** | 2012-05-28 08:00 A → 2012-04-09 08:00 (-49d) | 2015-05-25 09:00 → 2012-07-02 09:00 (-1057d) | 780.12d → 60.12d | 54% → 0% | 133.88d → 888.75d | baseline start 2015-04-13 08:00 → 2012-04-09 08:00; baseline finish 2015-07-06 09:00 → 2012-07-02 09:00 |
| 2 | Họp nhân viên biên tập 1 | 2015-04-13 08:00 A → 2012-04-09 08:00 (-1099d) | 2015-04-13 09:00 A → 2012-04-09 09:00 (-1099d) |  | 100% → 0% | none → 948.75d | constraint start no earlier than 2015-04-13 08:00 → start no earlier than 2012-04-09 08:00; resources Nguyễn A; Nguyễn Tài; Nguyễn C; Nguyễn B [50%] → Võ Anh Kiệt; Nguyên Cao; Nguyên Vũ; Ngô Bá Khá [50%]; baseline start 2015-04-13 08:00 → 2012-04-09 08:00; baseline finish 2015-04-13 09:00 → 2012-04-09 09:00 |
| 3 | Họp nhân viên biên tập 2 | 2015-04-20 08:00 A → 2012-04-16 08:00 (-1099d) | 2015-04-20 09:00 A → 2012-04-16 09:00 (-1099d) |  | 100% → 0% | none → 943.75d | constraint start no earlier than 2015-04-20 08:00 → start no earlier than 2012-04-16 08:00; resources Nguyễn A; Nguyễn Tài; Nguyễn C; Nguyễn B [50%] → Võ Anh Kiệt; Nguyên Cao; Nguyên Vũ; Ngô Bá Khá [50%]; baseline start 2015-04-20 08:00 → 2012-04-16 08:00; baseline finish 2015-04-20 09:00 → 2012-04-16 09:00 |
| 4 | Họp nhân viên biên tập 3 | 2015-04-27 08:00 A → 2012-04-23 08:00 (-1099d) | 2015-04-27 09:00 A → 2012-04-23 09:00 (-1099d) |  | 100% → 0% | none → 938.75d | constraint start no earlier than 2015-04-27 08:00 → start no earlier than 2012-04-23 08:00; resources Nguyễn A; Nguyễn Tài; Nguyễn C; Nguyễn B [50%] → Võ Anh Kiệt; Nguyên Cao; Nguyên Vũ; Ngô Bá Khá [50%]; baseline start 2015-04-27 08:00 → 2012-04-23 08:00; baseline finish 2015-04-27 09:00 → 2012-04-23 09:00 |
| 5 | Họp nhân viên biên tập 4 | 2015-05-04 08:00 A → 2012-04-30 08:00 (-1099d) | 2015-05-04 09:00 A → 2012-04-30 09:00 (-1099d) |  | 100% → 0% | none → 933.75d | constraint start no earlier than 2015-05-04 08:00 → start no earlier than 2012-04-30 08:00; resources Nguyễn A; Nguyễn Tài; Nguyễn C; Nguyễn B [50%] → Võ Anh Kiệt; Nguyên Cao; Nguyên Vũ; Ngô Bá Khá [50%]; baseline start 2015-05-04 08:00 → 2012-04-30 08:00; baseline finish 2015-05-04 09:00 → 2012-04-30 09:00 |
| 6 | Họp nhân viên biên tập 5 | 2015-05-11 08:00 A → 2012-05-07 08:00 (-1099d) | 2015-05-11 09:00 A → 2012-05-07 09:00 (-1099d) |  | 100% → 0% | none → 928.75d | constraint start no earlier than 2015-05-11 08:00 → start no earlier than 2012-05-07 08:00; resources Nguyễn A; Nguyễn Tài; Nguyễn C; Nguyễn B [50%] → Võ Anh Kiệt; Nguyên Cao; Nguyên Vũ; Ngô Bá Khá [50%]; baseline start 2015-05-11 08:00 → 2012-05-07 08:00; baseline finish 2015-05-11 09:00 → 2012-05-07 09:00 |
| 7 | Họp nhân viên biên tập 6 | 2015-05-18 08:00 A → 2012-05-14 08:00 (-1099d) | 2015-05-18 09:00 A → 2012-05-14 09:00 (-1099d) |  | 100% → 0% | none → 923.75d | constraint start no earlier than 2015-05-18 08:00 → start no earlier than 2012-05-14 08:00; resources Nguyễn A; Nguyễn Tài; Nguyễn C; Nguyễn B [50%] → Võ Anh Kiệt; Nguyên Cao; Nguyên Vũ; Ngô Bá Khá [50%]; baseline start 2015-05-18 08:00 → 2012-05-14 08:00; baseline finish 2015-05-18 09:00 → 2012-05-14 09:00 |
| 8 | Họp nhân viên biên tập 7 | 2015-05-25 08:00 A → 2012-05-21 08:00 (-1099d) | 2015-05-25 09:00 A → 2012-05-21 09:00 (-1099d) |  | 100% → 0% | none → 918.75d | constraint start no earlier than 2015-05-25 08:00 → start no earlier than 2012-05-21 08:00; resources Nguyễn A; Nguyễn Tài; Nguyễn C; Nguyễn B [50%] → Võ Anh Kiệt; Nguyên Cao; Nguyên Vũ; Ngô Bá Khá [50%]; baseline start 2015-05-25 08:00 → 2012-05-21 08:00; baseline finish 2015-05-25 09:00 → 2012-05-21 09:00 |
| 9 | Họp nhân viên biên tập 8 |  |  |  |  | 913.88d → 913.75d | resources Nguyễn A; Nguyễn Tài; Nguyễn C; Nguyễn B [50%] → Võ Anh Kiệt; Nguyên Cao; Nguyên Vũ; Ngô Bá Khá [50%]; baseline start 2015-06-01 08:00 → 2012-05-28 08:00; baseline finish 2015-06-01 09:00 → 2012-05-28 09:00 |
| 10 | Họp nhân viên biên tập 9 |  |  |  |  | 908.88d → 908.75d | resources Nguyễn A; Nguyễn Tài; Nguyễn C; Nguyễn B [50%] → Võ Anh Kiệt; Nguyên Cao; Nguyên Vũ; Ngô Bá Khá [50%]; baseline start 2015-06-08 08:00 → 2012-06-04 08:00; baseline finish 2015-06-08 09:00 → 2012-06-04 09:00 |
| 11 | Họp nhân viên biên tập 10 |  |  |  |  | 903.88d → 903.75d | resources Nguyễn A; Nguyễn Tài; Nguyễn C; Nguyễn B [50%] → Võ Anh Kiệt; Nguyên Cao; Nguyên Vũ; Ngô Bá Khá [50%]; baseline start 2015-06-15 08:00 → 2012-06-11 08:00; baseline finish 2015-06-15 09:00 → 2012-06-11 09:00 |
| 12 | Họp nhân viên biên tập 11 |  |  |  |  | 898.88d → 898.75d | resources Nguyễn A; Nguyễn Tài; Nguyễn C; Nguyễn B [50%] → Võ Anh Kiệt; Nguyên Cao; Nguyên Vũ; Ngô Bá Khá [50%]; baseline start 2015-06-22 08:00 → 2012-06-18 08:00; baseline finish 2015-06-22 09:00 → 2012-06-18 09:00 |
| 13 | Họp nhân viên biên tập 12 |  |  |  |  | 893.88d → 893.75d | resources Nguyễn A; Nguyễn Tài; Nguyễn C; Nguyễn B [50%] → Võ Anh Kiệt; Nguyên Cao; Nguyên Vũ; Ngô Bá Khá [50%]; baseline start 2015-06-29 08:00 → 2012-06-25 08:00; baseline finish 2015-06-29 09:00 → 2012-06-25 09:00 |
| 14 | Họp nhân viên biên tập 13 |  |  |  |  | 888.88d → 888.75d | resources Nguyễn A; Nguyễn Tài; Nguyễn C; Nguyễn B [50%] → Võ Anh Kiệt; Nguyên Cao; Nguyên Vũ; Ngô Bá Khá [50%]; baseline start 2015-07-06 08:00 → 2012-07-02 08:00; baseline finish 2015-07-06 09:00 → 2012-07-02 09:00 |
| 15 | **Sự tiếp nhận** | 2015-04-06 08:00 A → 2015-04-06 08:00 | 2015-05-26 17:00 A → 2015-05-25 12:00 (-1d) | 37d → 35.5d | 100% → 0% | none → 0d |  |
| 16 | Nhận bản thảo | 2015-04-06 08:00 A → 2015-04-06 08:00 | 2015-04-06 08:00 A → 2015-04-06 08:00 |  | 100% → 0% | none → 0d |  |
| 17 | Biên tập nội dung | 2015-04-06 08:00 A → 2015-04-06 08:00 | 2015-04-30 10:00 A → 2015-04-30 10:00 |  | 100% → 0% | none → 0d | resources Nguyễn A → Võ Anh Kiệt |
| 18 | Đánh giá tác phẩm gốc | 2015-04-23 10:00 A → 2015-04-23 10:00 | 2015-05-07 12:00 A → 2015-05-07 12:00 |  | 100% → 0% | none → 0d | resources Nguyễn C; Nguyễn D → Nguyên Vũ; Đan Phương |
| 19 | Đánh giá của tác giả về nội dung biên tập | 2015-05-07 13:00 A → 2015-05-07 13:00 | 2015-05-26 17:00 A → 2015-05-25 12:00 (-1d) | 13.5d → 12d | 100% → 0% | none → 0d | resources Nguyễn Hài; Biên tập bản sao → Nguyên Ngô; Biên tập bản sao |
| 20 | Bàn giao cho bộ phận biên tập | 2015-05-26 17:00 A → 2015-05-25 12:00 (-1d) | 2015-05-26 17:00 A → 2015-05-25 12:00 (-1d) |  | 100% → 0% | none → 0d | was named Bàn giao cho bôj phận biên tập; resources Nguyễn A → Võ Anh Kiệt |
| 21 | **Biên tập** | 2015-05-27 08:00 A → 2015-05-25 13:00 (-2d) | 2015-07-03 17:00 → 2015-07-03 14:00 | 28d → 29.12d | 50% → 0% | 1.75d → 0d |  |
| 22 | Sắp xếp bản thảo cho bản sao | 2015-05-27 08:00 A → 2015-05-25 13:00 (-2d) | 2015-06-02 17:00 A → 2015-06-01 14:00 (-1d) | 5d → 5.12d | 100% → 0% | none → 0d | resources Nguyễn C; Nguyễn B [50%] → Nguyên Vũ; Ngô Bá Khá [50%] |
| 23 | Bản sao | 2015-06-03 08:00 A → 2015-06-01 14:00 (-2d) | 2015-06-17 10:00 A → 2015-06-16 16:00 (-1d) | 10.25d → 11.25d | 100% → 0% | none → 0d |  |
| 24 | Đánh giá của tác giả về bản sao | 2015-06-17 10:00 → 2015-06-16 16:00 (-1d) | 2015-07-01 10:00 → 2015-06-30 16:00 (-1d) |  |  | 1.75d → 0d | resources Nguyễn Hài; Biên tập bản sao [25%] → Nguyên Ngô; Biên tập bản sao [25%] |
| 25 | Kết hợp bản sao | 2015-06-26 15:00 → 2015-06-26 11:00 | 2015-07-03 17:00 → 2015-07-03 14:00 |  |  | 1.75d → 0d | resources Nguyễn A; Nguyễn B [50%] → Võ Anh Kiệt; Ngô Bá Khá [50%] |
| 26 | Bàn giao cho bộ phận sản xuất | 2015-07-03 17:00 → 2015-07-03 14:00 | 2015-07-03 17:00 → 2015-07-03 14:00 |  |  | 1.75d → 0d | resources Nguyễn C → Nguyên Vũ |
| 27 | **Thiết kế và sản xuất** | 2015-07-06 08:00 → 2015-07-03 14:00 (-3d) | 2015-09-23 17:00 → 2015-09-23 16:00 | 58d → 58.25d |  | 1.75d → 0d |  |
| 28 | Thiết lập trang | 2015-07-06 08:00 → 2015-07-03 14:00 (-3d) | 2015-07-24 17:00 → 2015-07-24 14:00 |  |  | 1.75d → 0d | resources Nguyễn D → Đan Phương |
| 29 | Thiết kế minh họa nội dung | 2015-07-06 08:00 → 2015-07-03 14:00 (-3d) | 2015-07-27 10:00 → 2015-07-24 16:00 (-3d) |  |  | 1.75d → 0d | was named Thiết kế nội dung minh họa; resources Võ Anh Kiệt; Nguyễn C → Phương Thanh; Nguyên Vũ |
| 30 | **Đánh giá trang thứ nhất** | 2015-07-27 10:00 → 2015-07-24 16:00 (-3d) | 2015-09-07 10:00 → 2015-09-04 16:00 (-3d) |  |  | 1.75d → 0d |  |
| 31 | Hiệu đính và lập chỉ mục | 2015-07-27 10:00 → 2015-07-24 16:00 (-3d) | 2015-08-10 10:00 → 2015-08-07 16:00 (-3d) |  |  | 1.75d → 0d | was named Proofread and index; resources Nguyễn Hài; Biên tập bản sao → Nguyên Ngô; Biên tập bản sao |
| 32 | Kết hợp đánh giá Trang 1 | 2015-08-10 10:00 → 2015-08-07 16:00 (-3d) | 2015-08-24 10:00 → 2015-08-21 16:00 (-3d) |  |  | 1.75d → 0d | was named Incorporate 1st Pages review; resources Nguyễn C; Nguyễn B [50%] → Nguyên Vũ; Ngô Bá Khá [50%] |
| 33 | Gửi các trang đã được kiểm tra đến Sản xuất | 2015-08-24 10:00 → 2015-08-21 16:00 (-3d) | 2015-08-24 10:00 → 2015-08-21 16:00 (-3d) |  |  | 1.75d → 0d | was named Send proofed pages to Production; resources Nguyễn C → Nguyên Vũ |
| 34 | Nhập sửa trang và chỉ mục | 2015-08-24 10:00 → 2015-08-21 16:00 (-3d) | 2015-08-31 10:00 → 2015-08-28 16:00 (-3d) |  |  | 1.75d → 0d | was named Enter page corrections and index; resources Nguyễn D; Nguyễn B [50%] → Đan Phương; Ngô Bá Khá [50%] |
| 35 | Thiết kế bìa | 2015-08-31 10:00 → 2015-08-28 16:00 (-3d) | 2015-09-07 10:00 → 2015-09-04 16:00 (-3d) |  |  | 1.75d → 0d | was named Cover design; resources Võ Anh Kiệt → Phương Thanh |
| 36 | **Đánh giá trang 2** | 2015-09-07 10:00 → 2015-09-04 16:00 (-3d) | 2015-09-23 17:00 → 2015-09-23 16:00 | 12.75d → 13d |  | 1.75d → 0d | was named 2nd Pages review |
| 37 | Bằng chứng và đánh giá | 2015-09-07 10:00 → 2015-09-04 16:00 (-3d) | 2015-09-15 15:00 → 2015-09-15 11:00 |  |  | 1.75d → 0d | was named Proof and review; resources Nguyễn C → Nguyên Vũ |
| 38 | Gửi các trang đã được kiểm tra đến Sản xuất | 2015-09-15 15:00 → 2015-09-15 11:00 | 2015-09-15 15:00 → 2015-09-15 11:00 |  |  | 1.75d → 0d | was named Send proofed pages to Production; resources Nguyễn C → Nguyên Vũ |
| 39 | Đánh giá cuối cùng | 2015-09-17 08:00 → 2015-09-16 16:00 (-1d) | 2015-09-23 17:00 → 2015-09-23 16:00 |  |  | 2d → 0d | was named Final review; resources Nguyễn D; Nguyễn C [50%]; Nguyễn A [50%]; Bound galley proofs [20 copies] → Đan Phương; Nguyên Vũ [50%]; Võ Anh Kiệt [50%]; Bound galley proofs [20 copies] |
| 40 | **Trang web đồng hành của sách thiết kế** | 2015-09-07 10:00 → 2015-09-04 16:00 (-3d) | 2015-09-21 10:00 → 2015-09-18 16:00 (-3d) |  |  | 4.75d → 3d | was named Design book's companion website |
| 41 | Tạo mô hình | 2015-09-07 10:00 → 2015-09-04 16:00 (-3d) | 2015-09-17 10:00 → 2015-09-16 16:00 (-1d) |  |  | 4.75d → 3d | was named Create mockup; resources Võ Anh Kiệt; Nguyễn C → Phương Thanh; Nguyên Vũ |
| 42 | Đánh giá với tác giả | 2015-09-17 10:00 → 2015-09-16 16:00 (-1d) | 2015-09-21 10:00 → 2015-09-18 16:00 (-3d) |  |  | 4.75d → 3d | was named Review with author; resources Võ Anh Kiệt; Nguyễn Hài; Travel [0.1%]; Nguyễn B [50%] → Phương Thanh; Nguyên Ngô; Travel [0.1%]; Ngô Bá Khá [50%] |
| 43 | **Chuẩn bị màu và in ấn** | 2015-09-28 08:00 → 2015-09-23 16:00 (-5d) | 2015-11-26 17:00 → 2015-11-26 16:00 | 44d → 46d |  |  | was named Color prep and printing |
| 44 | Gửi đến nhà màu | 2015-09-28 08:00 → 2015-09-23 16:00 (-5d) | 2015-09-28 17:00 → 2015-09-28 16:00 |  |  |  | was named Send to color house; resources Nguyễn C → Nguyên Vũ |
| 45 | Tạo bằng chứng | 2015-09-29 08:00 → 2015-09-28 16:00 (-1d) | 2015-10-12 17:00 → 2015-10-12 16:00 |  |  |  | was named Generate proofs |
| 46 | In và gửi | 2015-10-16 08:00 → 2015-10-15 16:00 (-1d) | 2015-11-26 17:00 → 2015-11-26 16:00 |  |  |  | was named Print and ship |
| 47 | **Chuẩn bị ra mắt sách** | 2015-09-29 08:00 → 2015-09-28 16:00 (-1d) | 2015-10-28 17:00 → 2015-10-28 16:00 |  |  |  | was named Book launch prep |
| 48 | Kế hoạch ra mắt | 2015-09-29 08:00 → 2015-09-28 16:00 (-1d) | 2015-10-05 17:00 → 2015-10-05 16:00 |  |  |  | was named Launch planning; resources Nguyễn A [50%]; Nguyễn D → Võ Anh Kiệt [50%]; Đan Phương |
| 49 | Chỉ định các thành viên nhóm ra mắt | 2015-10-06 08:00 → 2015-10-05 16:00 (-1d) | 2015-10-06 17:00 → 2015-10-06 16:00 |  |  |  | was named Assign launch team members; resources Nguyễn A → Võ Anh Kiệt |
| 50 | Hoàn thành bảng câu hỏi của tác giả | 2015-10-07 08:00 → 2015-10-06 16:00 (-1d) | 2015-10-13 17:00 → 2015-10-13 16:00 |  |  |  | was named Complete author questionnaire; resources Nguyễn C; Nguyễn Hài; Travel [0.1%] → Nguyên Vũ; Nguyên Ngô; Travel [0.1%] |
| 51 | Lên lịch phỏng vấn tác giả | 2015-10-14 08:00 → 2015-10-13 16:00 (-1d) | 2015-10-14 17:00 → 2015-10-14 16:00 |  |  |  | was named Schedule author interviews; resources Nguyễn C → Nguyên Vũ |
| 52 | Thiết kế và đặt hàng tài liệu tiếp thị | 2015-10-15 08:00 → 2015-10-14 16:00 (-1d) | 2015-10-28 17:00 → 2015-10-28 16:00 |  |  |  | was named Design and order marketing material; resources Nguyễn C → Nguyên Vũ |

## Version 4 (saved 2025-09-26, file Advanced Tracking C_Start.mpp)

Last finish stays 2015-11-26. Complete tasks 0 → 14.

Changed:

| ID | Task | Start | Finish | Duration | Complete | Total float | Other |
| --- | --- | --- | --- | --- | --- | --- | --- |
| 1 | **Họp nhân viên biên tập** | 2012-04-09 08:00 → 2012-05-28 08:00 A (+49d) | 2012-07-02 09:00 → 2015-05-25 09:00 (+1057d) | 60.12d → 780.12d | 0% → 54% | 888.75d → 133.88d | baseline start 2012-04-09 08:00 → 2015-04-13 08:00; baseline finish 2012-07-02 09:00 → 2015-07-06 09:00 |
| 2 | Họp nhân viên biên tập 1 | 2012-04-09 08:00 → 2015-04-13 08:00 A (+1099d) | 2012-04-09 09:00 → 2015-04-13 09:00 A (+1099d) |  | 0% → 100% | 948.75d → none | constraint start no earlier than 2012-04-09 08:00 → start no earlier than 2015-04-13 08:00; resources Võ Anh Kiệt; Nguyên Cao; Nguyên Vũ; Ngô Bá Khá [50%] → Nguyễn A; Nguyễn Tài; Nguyễn C; Nguyễn B [50%]; baseline start 2012-04-09 08:00 → 2015-04-13 08:00; baseline finish 2012-04-09 09:00 → 2015-04-13 09:00 |
| 3 | Họp nhân viên biên tập 2 | 2012-04-16 08:00 → 2015-04-20 08:00 A (+1099d) | 2012-04-16 09:00 → 2015-04-20 09:00 A (+1099d) |  | 0% → 100% | 943.75d → none | constraint start no earlier than 2012-04-16 08:00 → start no earlier than 2015-04-20 08:00; resources Võ Anh Kiệt; Nguyên Cao; Nguyên Vũ; Ngô Bá Khá [50%] → Nguyễn A; Nguyễn Tài; Nguyễn C; Nguyễn B [50%]; baseline start 2012-04-16 08:00 → 2015-04-20 08:00; baseline finish 2012-04-16 09:00 → 2015-04-20 09:00 |
| 4 | Họp nhân viên biên tập 3 | 2012-04-23 08:00 → 2015-04-27 08:00 A (+1099d) | 2012-04-23 09:00 → 2015-04-27 09:00 A (+1099d) |  | 0% → 100% | 938.75d → none | constraint start no earlier than 2012-04-23 08:00 → start no earlier than 2015-04-27 08:00; resources Võ Anh Kiệt; Nguyên Cao; Nguyên Vũ; Ngô Bá Khá [50%] → Nguyễn A; Nguyễn Tài; Nguyễn C; Nguyễn B [50%]; baseline start 2012-04-23 08:00 → 2015-04-27 08:00; baseline finish 2012-04-23 09:00 → 2015-04-27 09:00 |
| 5 | Họp nhân viên biên tập 4 | 2012-04-30 08:00 → 2015-05-04 08:00 A (+1099d) | 2012-04-30 09:00 → 2015-05-04 09:00 A (+1099d) |  | 0% → 100% | 933.75d → none | constraint start no earlier than 2012-04-30 08:00 → start no earlier than 2015-05-04 08:00; resources Võ Anh Kiệt; Nguyên Cao; Nguyên Vũ; Ngô Bá Khá [50%] → Nguyễn A; Nguyễn Tài; Nguyễn C; Nguyễn B [50%]; baseline start 2012-04-30 08:00 → 2015-05-04 08:00; baseline finish 2012-04-30 09:00 → 2015-05-04 09:00 |
| 6 | Họp nhân viên biên tập 5 | 2012-05-07 08:00 → 2015-05-11 08:00 A (+1099d) | 2012-05-07 09:00 → 2015-05-11 09:00 A (+1099d) |  | 0% → 100% | 928.75d → none | constraint start no earlier than 2012-05-07 08:00 → start no earlier than 2015-05-11 08:00; resources Võ Anh Kiệt; Nguyên Cao; Nguyên Vũ; Ngô Bá Khá [50%] → Nguyễn A; Nguyễn Tài; Nguyễn C; Nguyễn B [50%]; baseline start 2012-05-07 08:00 → 2015-05-11 08:00; baseline finish 2012-05-07 09:00 → 2015-05-11 09:00 |
| 7 | Họp nhân viên biên tập 6 | 2012-05-14 08:00 → 2015-05-18 08:00 A (+1099d) | 2012-05-14 09:00 → 2015-05-18 09:00 A (+1099d) |  | 0% → 100% | 923.75d → none | constraint start no earlier than 2012-05-14 08:00 → start no earlier than 2015-05-18 08:00; resources Võ Anh Kiệt; Nguyên Cao; Nguyên Vũ; Ngô Bá Khá [50%] → Nguyễn A; Nguyễn Tài; Nguyễn C; Nguyễn B [50%]; baseline start 2012-05-14 08:00 → 2015-05-18 08:00; baseline finish 2012-05-14 09:00 → 2015-05-18 09:00 |
| 8 | Họp nhân viên biên tập 7 | 2012-05-21 08:00 → 2015-05-25 08:00 A (+1099d) | 2012-05-21 09:00 → 2015-05-25 09:00 A (+1099d) |  | 0% → 100% | 918.75d → none | constraint start no earlier than 2012-05-21 08:00 → start no earlier than 2015-05-25 08:00; resources Võ Anh Kiệt; Nguyên Cao; Nguyên Vũ; Ngô Bá Khá [50%] → Nguyễn A; Nguyễn Tài; Nguyễn C; Nguyễn B [50%]; baseline start 2012-05-21 08:00 → 2015-05-25 08:00; baseline finish 2012-05-21 09:00 → 2015-05-25 09:00 |
| 9 | Họp nhân viên biên tập 8 |  |  |  |  | 913.75d → 913.88d | resources Võ Anh Kiệt; Nguyên Cao; Nguyên Vũ; Ngô Bá Khá [50%] → Nguyễn A; Nguyễn Tài; Nguyễn C; Nguyễn B [50%]; baseline start 2012-05-28 08:00 → 2015-06-01 08:00; baseline finish 2012-05-28 09:00 → 2015-06-01 09:00 |
| 10 | Họp nhân viên biên tập 9 |  |  |  |  | 908.75d → 908.88d | resources Võ Anh Kiệt; Nguyên Cao; Nguyên Vũ; Ngô Bá Khá [50%] → Nguyễn A; Nguyễn Tài; Nguyễn C; Nguyễn B [50%]; baseline start 2012-06-04 08:00 → 2015-06-08 08:00; baseline finish 2012-06-04 09:00 → 2015-06-08 09:00 |
| 11 | Họp nhân viên biên tập 10 |  |  |  |  | 903.75d → 903.88d | resources Võ Anh Kiệt; Nguyên Cao; Nguyên Vũ; Ngô Bá Khá [50%] → Nguyễn A; Nguyễn Tài; Nguyễn C; Nguyễn B [50%]; baseline start 2012-06-11 08:00 → 2015-06-15 08:00; baseline finish 2012-06-11 09:00 → 2015-06-15 09:00 |
| 12 | Họp nhân viên biên tập 11 |  |  |  |  | 898.75d → 898.88d | resources Võ Anh Kiệt; Nguyên Cao; Nguyên Vũ; Ngô Bá Khá [50%] → Nguyễn A; Nguyễn Tài; Nguyễn C; Nguyễn B [50%]; baseline start 2012-06-18 08:00 → 2015-06-22 08:00; baseline finish 2012-06-18 09:00 → 2015-06-22 09:00 |
| 13 | Họp nhân viên biên tập 12 |  |  |  |  | 893.75d → 893.88d | resources Võ Anh Kiệt; Nguyên Cao; Nguyên Vũ; Ngô Bá Khá [50%] → Nguyễn A; Nguyễn Tài; Nguyễn C; Nguyễn B [50%]; baseline start 2012-06-25 08:00 → 2015-06-29 08:00; baseline finish 2012-06-25 09:00 → 2015-06-29 09:00 |
| 14 | Họp nhân viên biên tập 13 |  |  |  |  | 888.75d → 888.88d | resources Võ Anh Kiệt; Nguyên Cao; Nguyên Vũ; Ngô Bá Khá [50%] → Nguyễn A; Nguyễn Tài; Nguyễn C; Nguyễn B [50%]; baseline start 2012-07-02 08:00 → 2015-07-06 08:00; baseline finish 2012-07-02 09:00 → 2015-07-06 09:00 |
| 15 | **Sự tiếp nhận** | 2015-04-06 08:00 A | 2015-05-25 12:00 → 2015-05-26 17:00 A (+1d) | 35.5d → 37d | 0% → 100% | 0d → none |  |
| 16 | Nhận bản thảo | 2015-04-06 08:00 A | 2015-04-06 08:00 A |  | 0% → 100% | 0d → none |  |
| 17 | Biên tập nội dung | 2015-04-06 08:00 A | 2015-04-30 10:00 A |  | 0% → 100% | 0d → none | resources Võ Anh Kiệt → Nguyễn A |
| 18 | Đánh giá tác phẩm gốc | 2015-04-23 10:00 A | 2015-05-07 12:00 A |  | 0% → 100% | 0d → none | resources Nguyên Vũ; Đan Phương → Nguyễn C; Nguyễn D |
| 19 | Đánh giá của tác giả về nội dung biên tập | 2015-05-07 13:00 A | 2015-05-25 12:00 → 2015-05-26 17:00 A (+1d) | 12d → 13.5d | 0% → 100% | 0d → none | resources Nguyên Ngô; Biên tập bản sao → Nguyễn Hài; Biên tập bản sao |
| 20 | Bàn giao cho bôj phận biên tập | 2015-05-25 12:00 → 2015-05-26 17:00 A (+1d) | 2015-05-25 12:00 → 2015-05-26 17:00 A (+1d) |  | 0% → 100% | 0d → none | was named Bàn giao cho bộ phận biên tập; resources Võ Anh Kiệt → Nguyễn A |
| 21 | **Biên tập** | 2015-05-25 13:00 → 2015-05-27 08:00 A (+2d) | 2015-07-03 14:00 → 2015-07-03 17:00 | 29.12d → 28d | 0% → 50% | 0d → 3.25d |  |
| 22 | Sắp xếp bản thảo cho bản sao | 2015-05-25 13:00 → 2015-05-27 08:00 A (+2d) | 2015-06-01 14:00 → 2015-06-02 17:00 A (+1d) | 5.12d → 5d | 0% → 100% | 0d → none | resources Nguyên Vũ; Ngô Bá Khá [50%] → Nguyễn C; Nguyễn B [50%] |
| 23 | Bản sao | 2015-06-01 14:00 → 2015-06-03 08:00 A (+2d) | 2015-06-16 16:00 → 2015-06-17 10:00 A (+1d) | 11.25d → 10.25d | 0% → 100% | 0d → none |  |
| 24 | Đánh giá của tác giả về bản sao | 2015-06-16 16:00 → 2015-06-17 10:00 (+1d) | 2015-06-30 16:00 → 2015-07-01 10:00 (+1d) |  |  | 0d → 1.75d | resources Nguyên Ngô; Biên tập bản sao [25%] → Nguyễn Hài; Biên tập bản sao [25%] |
| 25 | Kết hợp bản sao | 2015-06-26 11:00 → 2015-06-26 15:00 | 2015-07-03 14:00 → 2015-07-03 17:00 |  |  | 0d → 1.75d | resources Võ Anh Kiệt; Ngô Bá Khá [50%] → Nguyễn A; Nguyễn B [50%] |
| 26 | Bàn giao cho bộ phận sản xuất | 2015-07-03 14:00 → 2015-07-03 17:00 | 2015-07-03 14:00 → 2015-07-03 17:00 |  |  | 0d → 1.75d | resources Nguyên Vũ → Nguyễn C |
| 27 | **Thiết kế và sản xuất** | 2015-07-03 14:00 → 2015-07-06 08:00 (+3d) | 2015-09-23 16:00 → 2015-09-23 17:00 | 58.25d → 58d |  | 0d → 2d |  |
| 28 | Thiết lập trang | 2015-07-03 14:00 → 2015-07-06 08:00 (+3d) | 2015-07-24 14:00 → 2015-07-24 17:00 |  |  | 0d → 1.75d | resources Đan Phương → Nguyễn D |
| 29 | Thiết kế nội dung minh họa | 2015-07-03 14:00 → 2015-07-06 08:00 (+3d) | 2015-07-24 16:00 → 2015-07-27 10:00 (+3d) |  |  | 0d → 1.75d | was named Thiết kế minh họa nội dung; resources Phương Thanh; Nguyên Vũ → Võ Anh Kiệt; Nguyễn C |
| 30 | **Đánh giá trang thứ nhất** | 2015-07-24 16:00 → 2015-07-27 10:00 (+3d) | 2015-09-04 16:00 → 2015-09-07 10:00 (+3d) |  |  | 0d → 3.25d |  |
| 31 | Hiệu đính và lập chỉ mục | 2015-07-24 16:00 → 2015-07-27 10:00 (+3d) | 2015-08-07 16:00 → 2015-08-10 10:00 (+3d) |  |  | 0d → 3.25d | resources Nguyên Ngô; Biên tập bản sao → Nguyễn Hài; Biên tập bản sao |
| 32 | Kết hợp đánh giá Trang 1 | 2015-08-07 16:00 → 2015-08-10 10:00 (+3d) | 2015-08-21 16:00 → 2015-08-24 10:00 (+3d) |  |  | 0d → 3.25d | resources Nguyên Vũ; Ngô Bá Khá [50%] → Nguyễn C; Nguyễn B [50%] |
| 33 | Gửi các trang đã được kiểm tra đến Sản xuất | 2015-08-21 16:00 → 2015-08-24 10:00 (+3d) | 2015-08-21 16:00 → 2015-08-24 10:00 (+3d) |  |  | 0d → 3.25d | resources Nguyên Vũ → Nguyễn C |
| 34 | Nhập sửa trang và chỉ mục | 2015-08-21 16:00 → 2015-08-24 10:00 (+3d) | 2015-08-28 16:00 → 2015-08-31 10:00 (+3d) |  |  | 0d → 3.25d | resources Đan Phương; Ngô Bá Khá [50%] → Nguyễn D; Nguyễn B [50%] |
| 35 | Thiết kế bìa | 2015-08-28 16:00 → 2015-08-31 10:00 (+3d) | 2015-09-04 16:00 → 2015-09-07 10:00 (+3d) |  |  | 0d → 3.25d | resources Phương Thanh → Võ Anh Kiệt |
| 36 | **Đánh giá trang 2** | 2015-09-04 16:00 → 2015-09-07 10:00 (+3d) | 2015-09-23 16:00 → 2015-09-23 17:00 | 13d → 12.75d |  | 0d → 2d |  |
| 37 | Bằng chứng và đánh giá | 2015-09-04 16:00 → 2015-09-07 10:00 (+3d) | 2015-09-15 11:00 → 2015-09-15 15:00 |  |  | 0d → 3.25d | resources Nguyên Vũ → Nguyễn C |
| 38 | Gửi các trang đã được kiểm tra đến Sản xuất | 2015-09-15 11:00 → 2015-09-15 15:00 | 2015-09-15 11:00 → 2015-09-15 15:00 |  |  | 0d → 3.25d | resources Nguyên Vũ → Nguyễn C |
| 39 | Đánh giá cuối cùng | 2015-09-16 16:00 → 2015-09-17 08:00 (+1d) | 2015-09-23 16:00 → 2015-09-23 17:00 |  |  | 0d → 2d | resources Đan Phương; Nguyên Vũ [50%]; Võ Anh Kiệt [50%]; Bound galley proofs [20 copies] → Nguyễn D; Nguyễn C [50%]; Nguyễn A [50%]; Bound galley proofs [20 copies] |
| 40 | **Trang web đồng hành của sách thiết kế** | 2015-09-04 16:00 → 2015-09-07 10:00 (+3d) | 2015-09-18 16:00 → 2015-09-21 10:00 (+3d) |  |  | 3d → 4.75d |  |
| 41 | Tạo mô hình | 2015-09-04 16:00 → 2015-09-07 10:00 (+3d) | 2015-09-16 16:00 → 2015-09-17 10:00 (+1d) |  |  | 3d → 4.75d | resources Phương Thanh; Nguyên Vũ → Võ Anh Kiệt; Nguyễn C |
| 42 | Đánh giá với tác giả | 2015-09-16 16:00 → 2015-09-17 10:00 (+1d) | 2015-09-18 16:00 → 2015-09-21 10:00 (+3d) |  |  | 3d → 4.75d | resources Phương Thanh; Nguyên Ngô; Travel [0.1%]; Ngô Bá Khá [50%] → Võ Anh Kiệt; Nguyễn Hài; Travel [0.1%]; Nguyễn B [50%] |
| 43 | **Chuẩn bị màu và in ấn** | 2015-09-23 16:00 → 2015-09-28 08:00 (+5d) | 2015-11-26 16:00 → 2015-11-26 17:00 | 46d → 44d |  |  |  |
| 44 | Gửi đến nhà màu | 2015-09-23 16:00 → 2015-09-28 08:00 (+5d) | 2015-09-28 16:00 → 2015-09-28 17:00 |  |  |  | resources Nguyên Vũ → Nguyễn C |
| 45 | Tạo bằng chứng | 2015-09-28 16:00 → 2015-09-29 08:00 (+1d) | 2015-10-12 16:00 → 2015-10-12 17:00 |  |  |  |  |
| 46 | In và gửi | 2015-10-15 16:00 → 2015-10-16 08:00 (+1d) | 2015-11-26 16:00 → 2015-11-26 17:00 |  |  |  |  |
| 47 | **Chuẩn bị ra mắt sách** | 2015-09-28 16:00 → 2015-09-29 08:00 (+1d) | 2015-10-28 16:00 → 2015-10-28 17:00 |  |  |  |  |
| 48 | Kế hoạch ra mắt | 2015-09-28 16:00 → 2015-09-29 08:00 (+1d) | 2015-10-05 16:00 → 2015-10-05 17:00 |  |  |  | resources Võ Anh Kiệt [50%]; Đan Phương → Nguyễn A [50%]; Nguyễn D |
| 49 | Chỉ định các thành viên nhóm ra mắt | 2015-10-05 16:00 → 2015-10-06 08:00 (+1d) | 2015-10-06 16:00 → 2015-10-06 17:00 |  |  |  | resources Võ Anh Kiệt → Nguyễn A |
| 50 | Hoàn thành bảng câu hỏi của tác giả | 2015-10-06 16:00 → 2015-10-07 08:00 (+1d) | 2015-10-13 16:00 → 2015-10-13 17:00 |  |  |  | resources Nguyên Vũ; Nguyên Ngô; Travel [0.1%] → Nguyễn C; Nguyễn Hài; Travel [0.1%] |
| 51 | Lên lịch phỏng vấn tác giả | 2015-10-13 16:00 → 2015-10-14 08:00 (+1d) | 2015-10-14 16:00 → 2015-10-14 17:00 |  |  |  | resources Nguyên Vũ → Nguyễn C |
| 52 | Thiết kế và đặt hàng tài liệu tiếp thị | 2015-10-14 16:00 → 2015-10-15 08:00 (+1d) | 2015-10-28 16:00 → 2015-10-28 17:00 |  |  |  | resources Nguyên Vũ → Nguyễn C |
