# Children's Book Schedule

How a schedule from MS Project changed from version to version. A marks actual dates.

## Version 1 (saved 2025-09-22)

| ID | WBS | Task | Duration | Start | Finish | Predecessors | Complete | Total float | Constraint |
| --- | --- | --- | --- | --- | --- | --- | --- | --- | --- |
| 1 | 1 | **Họp nhân viên biên tập** | 82.12d | 2015-04-13 A | 2015-08-05 |  | 37% | 86.88d |  |
| 2 |  | Họp nhân viên biên tập 1 | 1h | 2015-04-13 A | 2015-04-13 A |  | 100% |  | start no earlier than 2015-04-13 |
| 3 |  | Họp nhân viên biên tập 2 | 1h | 2015-04-20 A | 2015-04-20 A |  | 100% |  | start no earlier than 2015-04-20 |
| 4 |  | Họp nhân viên biên tập 3 | 1h | 2015-04-27 A | 2015-04-27 A |  | 100% |  | start no earlier than 2015-04-27 |
| 5 |  | Họp nhân viên biên tập 4 | 1h | 2015-05-04 A | 2015-05-04 A |  | 100% |  | start no earlier than 2015-05-04 |
| 6 |  | Họp nhân viên biên tập 5 | 1h | 2015-05-11 A | 2015-05-11 A |  | 100% |  | start no earlier than 2015-05-11 |
| 7 |  | Họp nhân viên biên tập 6 | 1h | 2015-05-18 A | 2015-05-18 A |  | 100% |  | start no earlier than 2015-05-18 |
| 8 |  | Họp nhân viên biên tập 7 | 1h | 2015-05-25 A | 2015-05-25 A |  | 100% |  | start no earlier than 2015-05-25 |
| 9 |  | Họp nhân viên biên tập 8 | 2h | 2015-08-04 | 2015-08-05 |  |  | 86.88d | start no earlier than 2015-08-04 |
| 10 |  | Họp nhân viên biên tập 9 | 2h | 2015-08-04 | 2015-08-05 |  |  | 86.88d | start no earlier than 2015-08-04 |
| 11 |  | Họp nhân viên biên tập 10 | 2h | 2015-08-04 | 2015-08-05 |  |  | 86.88d | start no earlier than 2015-08-04 |
| 12 |  | Họp nhân viên biên tập 11 | 2h | 2015-08-04 | 2015-08-05 |  |  | 86.88d | start no earlier than 2015-08-04 |
| 13 |  | Họp nhân viên biên tập 12 | 2h | 2015-08-04 | 2015-08-05 |  |  | 86.88d | start no earlier than 2015-08-04 |
| 14 |  | Họp nhân viên biên tập 13 | 2h | 2015-08-04 | 2015-08-05 |  |  | 86.88d | start no earlier than 2015-08-04 |
| 15 | 2 | **Sự tiếp nhận** | 37d | 2015-04-06 A | 2015-05-26 A |  | 100% |  |  |
| 16 |  | Manuscript received | 0d | 2015-04-06 A | 2015-04-06 A |  | 100% |  |  |
| 17 |  | Content edit | 15d | 2015-04-06 A | 2015-04-30 A | 16 | 100% |  |  |
| 18 |  | Original art review | 10.25d | 2015-04-23 A | 2015-05-07 A | 17FS-5d | 100% |  |  |
| 19 |  | Author review of content edit | 13.5d | 2015-05-07 A | 2015-05-26 A | 17, 18 | 100% |  |  |
| 20 |  | Handoff to Editorial | 0d | 2015-05-26 A | 2015-05-26 A | 19 | 100% |  |  |
| 21 | 3 | **Biên tập** | 28.4d | 2015-05-27 A | 2015-07-06 A | 15 | 100% |  |  |
| 22 |  | Sắp xếp bản thảo cho bản sao | 5d | 2015-05-27 A | 2015-06-02 A |  | 100% |  |  |
| 23 |  | Bản sao | 10.5d | 2015-06-03 A | 2015-06-17 A | 22 | 100% |  |  |
| 24 |  | Đánh giá của tác giả về bản sao | 10.2d | 2015-06-17 A | 2015-07-01 A | 23 | 100% |  |  |
| 25 |  | Kết hợp bản sao | 5.12d | 2015-06-29 A | 2015-07-06 A | 24FS-2.5% | 100% |  |  |
| 26 |  | Bàn giao cho bộ phận sản xuất | 0d | 2015-07-06 A | 2015-07-06 A | 25 | 100% |  |  |
| 27 | 4 | **Thiết kế và sản xuất** | 62.6d | 2015-07-06 A | 2015-09-30 | 21 | 30% | 2d |  |
| 28 | 4.1 | **Thiết lập trang** | 17.6d | 2015-07-06 A | 2015-07-29 |  | 99% | 0d |  |
| 29 |  | Thiết kế nội dung minh họa | 17.6d | 2015-07-06 A | 2015-07-29 A |  | 100% |  |  |
| 30 | 4.2 | **Đánh giá các trang lần thứ nhất** | 32d | 2015-07-30 A | 2015-09-11 | 29 | 7% | 3.5d |  |
| 31 |  | Hiệu đính và lập chỉ mục | 10d | 2015-07-30 A | 2015-08-14 |  | 20% | 3.5d | start no earlier than 2015-07-17 |
| 32 |  | Kết hợp đánh giá các trang lần thứ nhất | 10d | 2015-08-17 | 2015-08-28 | 31 |  | 3.5d |  |
| 33 |  | Gửi các trang đã được hiệu đính đến bộ phận sản xuất | 0d | 2015-08-28 | 2015-08-28 | 32 |  | 3.5d |  |
| 34 |  | Nhập các chỉnh sửa trang và chỉ mục | 5d | 2015-08-31 | 2015-09-04 | 33 |  | 3.5d |  |
| 35 |  | Thiết kế trang bìa | 5d | 2015-09-07 | 2015-09-11 | 34 |  | 3.5d |  |
| 36 | 4.3 | **Đánh giá các trang lần thứ 2** | 13d | 2015-09-14 | 2015-09-30 |  |  | 2d |  |
| 37 |  | Proof and review | 6.5d | 2015-09-14 | 2015-09-22 | 35 |  | 3.5d |  |
| 38 |  | Send proofed pages to Production | 0d | 2015-09-22 | 2015-09-22 | 37 |  | 3.5d |  |
| 39 |  | Final review | 5d | 2015-09-24 | 2015-09-30 | 38 |  | 2d |  |
| 40 | 4.4 | **Design book's companion website** | 10d | 2015-09-14 | 2015-09-25 | 30 |  | 5d |  |
| 41 |  | Create mockup | 4.5d | 2015-09-14 | 2015-09-23 |  |  | 5d |  |
| 42 |  | Review with author | 2d | 2015-09-24 | 2015-09-25 | 41 |  | 5d |  |
| 43 | 5 | **Color prep and printing** | 44d | 2015-10-05 | 2015-12-03 | 40 |  | 0d |  |
| 44 |  | Send to color house | 1d | 2015-10-05 | 2015-10-05 | 36 |  | 0d |  |
| 45 |  | Generate proofs | 10d | 2015-10-06 | 2015-10-19 | 44 |  | 0d |  |
| 46 |  | Print and ship | 30d | 2015-10-23 | 2015-12-03 | 45FS+3d |  | 0d |  |
| 47 | 6 | **Book launch prep** | 22d | 2015-10-06 | 2015-11-04 |  |  | 21d |  |
| 48 |  | Launch planning | 5d | 2015-10-06 | 2015-10-12 | 44 |  | 21d |  |
| 49 |  | Assign launch team members | 1d | 2015-10-13 | 2015-10-13 | 48 |  | 21d |  |
| 50 |  | Complete author questionnaire | 5d | 2015-10-14 | 2015-10-20 | 49 |  | 21d |  |
| 51 |  | Schedule author interviews | 1d | 2015-10-21 | 2015-10-21 | 50 |  | 21d |  |
| 52 |  | Design and order marketing material | 10d | 2015-10-22 | 2015-11-04 | 51 |  | 21d |  |

## Version 2 (saved 2025-09-26)

Last finish stays 2015-12-03.

Changed:

| ID | Task | Other |
| --- | --- | --- |
| 37 | Bằng chứng và đánh giá | was named Proof and review |
| 38 | Gửi các trang đã được kiểm tra đến Sản xuất | was named Send proofed pages to Production |
| 39 | Đánh giá cuối cùng | was named Final review |
| 40 | **Trang web đồng hành của sách thiết kế** | was named Design book's companion website |
| 41 | Tạo mô hình | was named Create mockup |
| 42 | Đánh giá với tác giả | was named Review with author |
| 43 | **Chuẩn bị màu và in ấn** | was named Color prep and printing |
| 44 | Gửi đến nhà màu | was named Send to color house |
| 45 | Tạo bằng chứng | was named Generate proofs |
| 46 | In và gửi | was named Print and ship |
| 47 | **Chuẩn bị ra mắt sách** | was named Book launch prep |
| 48 | Kế hoạch ra mắt | was named Launch planning |
| 49 | Chỉ định các thành viên nhóm ra mắt | was named Assign launch team members |
| 50 | Hoàn thành bảng câu hỏi của tác giả | was named Complete author questionnaire |
| 51 | Lên lịch phỏng vấn tác giả | was named Schedule author interviews |
| 52 | Thiết kế và đặt hàng tài liệu tiếp thị | was named Design and order marketing material |
