# New Book Launch schedule

How a schedule from MS Project changed from version to version. A marks actual dates.

## Version 1 (saved 2013-02-13)

| ID | WBS | Task | Duration | Start | Finish | Predecessors | Total float |
| --- | --- | --- | --- | --- | --- | --- | --- |
| 1 | 1 | **Planning Phase** | 11d | 2015-01-05 | 2015-01-19 |  | 0d |
| 2 |  | Assign launch team members | 1d | 2015-01-05 | 2015-01-05 |  | 0d |
| 3 |  | Complete author questionnaire | 1w | 2015-01-06 | 2015-01-12 | 2 | 5d |
| 4 |  | Schedule author interviews | 1w | 2015-01-05 | 2015-01-12 | 2 | 5d |
| 5 |  | Design and order marketing material | 2w | 2015-01-06 | 2015-01-19 | 2 | 0d |
| 6 |  | Planning complete! | 0d | 2015-01-19 | 2015-01-19 | 5 | 0d |
| 7 | 2 | **Internal Launch Phase** | 13d | 2015-01-20 | 2015-02-06 | 1 | 0d |
| 8 |  | Kickoff book launch meeting | 1d | 2015-01-20 | 2015-01-20 |  | 0d |
| 9 |  | Prepare book P&L statement | 2d | 2015-01-21 | 2015-01-23 | 8 | 10d |
| 10 |  | Plan author's travel itinerary | 6d | 2015-01-21 | 2015-01-29 | 8 | 6d |
| 11 |  | Channel Sales prep | 1w | 2015-01-21 | 2015-01-28 | 8 | 0d |
| 12 |  | Complete book launch form | 2d | 2015-01-29 | 2015-01-30 | 11 | 5d |
| 13 |  | Prepare book sales kit | 1w | 2015-01-29 | 2015-02-04 | 8, 11 | 0d |
| 14 |  | Distribute internal marketing material | 2d | 2015-02-05 | 2015-02-06 | 13 | 0d |
| 15 | 3 | **Public Launch Phase** | 12d | 2015-02-09 | 2015-02-24 | 7 | 0d |
| 16 | 3.1 | **Author travel and appearances** | 2d | 2015-02-09 | 2015-02-10 |  | 10d |
| 17 |  | Author radio interview | 1d | 2015-02-09 | 2015-02-09 |  | 10d |
| 18 |  | Author reading and signing at book fair | 1d | 2015-02-10 | 2015-02-10 | 17 | 10d |
| 19 |  | Distribute advance copies | 2d | 2015-02-09 | 2015-02-10 |  | 10d |
| 20 |  | Distribute book sales kit | 2d | 2015-02-09 | 2015-02-10 |  | 0d |
| 21 |  | Coordinate magazine feature articles | 7d | 2015-02-11 | 2015-02-19 | 20 | 3d |
| 22 |  | Launch public web portal for book | 1w | 2015-02-11 | 2015-02-17 | 20 | 0d |
| 23 |  | Launch social media programs for book | 1w | 2015-02-18 | 2015-02-24 | 22 | 0d |
| 24 |  | Launch complete! | 0d | 2015-02-24 | 2015-02-24 | 21, 22, 23 | 0d |

## Version 2 (data date 2015-01-14, saved 2025-09-22)

Last finish 2015-02-24 → 2015-02-26 (+2d). Complete tasks 0 → 9.

Changed:

| ID | Task | Start | Finish | Duration | Complete | Total float | Other |
| --- | --- | --- | --- | --- | --- | --- | --- |
| 1 | **Giai đoạn lập kế hoạch** | 2015-01-05 A | 2015-01-19 A |  | 0% → 100% | 0d → none | was named Planning Phase; baseline start none → 2015-01-05; baseline finish none → 2015-01-19 |
| 2 | Chỉ định các thành viên trong nhóm phát thành | 2015-01-05 A | 2015-01-05 A |  | 0% → 100% | 0d → none | was named Assign launch team members; resources Carole Poland → Trần Thanh Điện; baseline start none → 2015-01-05; baseline finish none → 2015-01-05 |
| 3 | Hoàn thành bảng câu hỏi về tác giả | 2015-01-06 A | 2015-01-12 A |  | 0% → 100% | 5d → none | was named Complete author questionnaire; resources Toni Poe → Tạ Thành Hải; baseline start none → 2015-01-06; baseline finish none → 2015-01-12 |
| 4 | Lên lịch phỏng vấn tác giả | 2015-01-05 → 2015-01-06 A (+1d) | 2015-01-12 A |  | 0% → 100% | 5d → none | was named Schedule author interviews; resources Jun Cao → Phạm Tấn Tài; baseline start none → 2015-01-06; baseline finish none → 2015-01-12 |
| 5 | Thiết kế và đặt hàng tài liệu tiếp thị | 2015-01-06 A | 2015-01-19 A |  | 0% → 100% | 0d → none | was named Design and order marketing material; resources Toby Nixon; Zac Woodall → Lại Hữu Diệp; Nguyễn Thúy An; baseline start none → 2015-01-06; baseline finish none → 2015-01-19 |
| 6 | Lập kế hoạch hoàn thành! | 2015-01-19 A | 2015-01-19 A |  | 0% → 100% | 0d → none | was named Planning complete!; baseline start none → 2015-01-19; baseline finish none → 2015-01-19 |
| 7 | **Giai đoạn ra mắt nội bộ** | 2015-01-20 A | 2015-02-06 → 2015-02-10 (+4d) | 13d → 15d | 0% → 67% |  | was named Internal Launch Phase; baseline start none → 2015-01-20; baseline finish none → 2015-02-06 |
| 8 | Khởi động cuộc họp ra mắt sách | 2015-01-20 A | 2015-01-20 A |  | 0% → 100% | 0d → none | was named Kickoff book launch meeting; resources Sharon Salavaria [50%]; Toby Nixon → Trương Thanh Mai [50%]; Nguyễn Thúy An; baseline start none → 2015-01-20; baseline finish none → 2015-01-20 |
| 9 | Soạn báo cáo lời - lỗ về sách | 2015-01-21 A | 2015-01-23 → 2015-01-26 A (+3d) | 2d → 3d | 0% → 100% | 10d → none | was named Prepare book P&L statement; resources Carole Poland → Trần Thanh Điện; baseline start none → 2015-01-21; baseline finish none → 2015-01-23 |
| 10 | Lập kế hoạch cho hành trình của tác giả | 2015-01-21 → 2015-01-20 A (-1d) | 2015-01-29 A | 6d → 7d | 0% → 100% | 6d → none | was named Plan author's travel itinerary; resources Jane Dow → Võ Anh Kiệt; baseline start none → 2015-01-21; baseline finish none → 2015-01-29 |
| 11 | Chuẩn bị kênh bán hàng | 2015-01-21 A | 2015-01-28 → 2015-01-30 A (+2d) | 1w → 7d | 0% → 100% | 0d → none | was named Channel Sales prep; resources Zac Woodall; Hany Morcos → Nguyễn Thúy An; Nguyễn Bảo Trân; baseline start none → 2015-01-21; baseline finish none → 2015-01-28 |
| 12 | Hoàn thành mẫu ra mắt sách | 2015-01-29 → 2015-02-02 (+4d) | 2015-01-30 → 2015-02-03 (+4d) |  |  |  | was named Complete book launch form; resources Toby Nixon; Vikas Jain → Lại Hữu Diệp; Nguyên Thanh; baseline start none → 2015-01-29; baseline finish none → 2015-01-30 |
| 13 | Chuẩn bị bộ dụng cụ bán sách | 2015-01-29 → 2015-02-02 (+4d) | 2015-02-04 → 2015-02-06 (+2d) |  |  |  | was named Prepare book sales kit; resources Hany Morcos; Zac Woodall → Nguyễn Bảo Trân; Nguyễn Thúy An; baseline start none → 2015-01-29; baseline finish none → 2015-02-04 |
| 14 | Phân phối tài liệu tiếp thị nội bộ | 2015-02-05 → 2015-02-09 (+4d) | 2015-02-06 → 2015-02-10 (+4d) |  |  |  | was named Distribute internal marketing material; baseline start none → 2015-02-05; baseline finish none → 2015-02-06 |
| 15 | **Giai đoạn ra mắt công chúng** | 2015-02-09 → 2015-02-11 (+2d) | 2015-02-24 → 2015-02-26 (+2d) |  |  |  | was named Public Launch Phase; resources none → Sharon Salavaria [50%]; baseline start none → 2015-02-09; baseline finish none → 2015-02-24 |
| 16 | **Chuyến đi và sự xuất hiện của tác giả** | 2015-02-09 → 2015-02-11 (+2d) | 2015-02-10 → 2015-02-12 (+2d) |  |  |  | was named Author travel and appearances; resources none → Sharon Salavaria [50%]; baseline start none → 2015-02-09; baseline finish none → 2015-02-10 |
| 17 | Phỏng vấn đài phát thanh tác giả | 2015-02-09 → 2015-02-11 (+2d) | 2015-02-09 → 2015-02-11 (+2d) |  |  |  | was named Author radio interview; baseline start none → 2015-02-09; baseline finish none → 2015-02-09 |
| 18 | Tác giả đọc và ký tặng tại hội chợ sách | 2015-02-10 → 2015-02-12 (+2d) | 2015-02-10 → 2015-02-12 (+2d) |  |  |  | was named Author reading and signing at book fair; baseline start none → 2015-02-10; baseline finish none → 2015-02-10 |
| 19 | Phân phối bản sao trước | 2015-02-09 → 2015-02-11 (+2d) | 2015-02-10 → 2015-02-12 (+2d) |  |  |  | was named Distribute advance copies; baseline start none → 2015-02-09; baseline finish none → 2015-02-10 |
| 20 | Phân phối bộ dụng cụ bán sách | 2015-02-09 → 2015-02-11 (+2d) | 2015-02-10 → 2015-02-12 (+2d) |  |  |  | was named Distribute book sales kit; baseline start none → 2015-02-09; baseline finish none → 2015-02-10 |
| 21 | Phối hợp các bài viết nổi bật trên tạp chí | 2015-02-11 → 2015-02-13 (+2d) | 2015-02-19 → 2015-02-23 (+4d) |  |  |  | was named Coordinate magazine feature articles; baseline start none → 2015-02-11; baseline finish none → 2015-02-19 |
| 22 | Ra mắt cổng thông tin web công cộng cho sách | 2015-02-11 → 2015-02-13 (+2d) | 2015-02-17 → 2015-02-19 (+2d) |  |  |  | was named Launch public web portal for book; baseline start none → 2015-02-11; baseline finish none → 2015-02-17 |
| 23 | Ra mắt chương trình truyền thông xã hội cho sách | 2015-02-18 → 2015-02-20 (+2d) | 2015-02-24 → 2015-02-26 (+2d) |  |  |  | was named Launch social media programs for book; baseline start none → 2015-02-18; baseline finish none → 2015-02-24 |
| 24 | Ra mắt hoàn tất! | 2015-02-24 → 2015-02-26 (+2d) | 2015-02-24 → 2015-02-26 (+2d) |  |  |  | was named Launch complete!; baseline start none → 2015-02-24; baseline finish none → 2015-02-24 |

## Version 3 (data date 2015-01-14, saved 2025-09-26)

Last finish stays 2015-02-26.

Changed:

| ID | Task | Other |
| --- | --- | --- |
| 14 | Phân phối tài liệu tiếp thị nội bộ | resources Zac Woodall → Đào Văn Lai |
| 15 | **Giai đoạn ra mắt công chúng** | resources Sharon Salavaria [50%] → Nguyễn Văn H [50%] |
| 16 | **Chuyến đi và sự xuất hiện của tác giả** | resources Sharon Salavaria [50%] → Nguyễn Văn H [50%] |
| 17 | Phỏng vấn đài phát thanh tác giả | resources Toni Poe → Cao Đức Tài |
| 18 | Tác giả đọc và ký tặng tại hội chợ sách | resources Toni Poe; Travel [0.1%] → Cao Đức Tài; Travel [0.1%] |
| 19 | Phân phối bản sao trước | resources Toby Nixon; Vikas Jain → Phạm Khuân; Lại Văn Lâm |
| 20 | Phân phối bộ dụng cụ bán sách | resources Zac Woodall → Đào Văn Lai |
| 21 | Phối hợp các bài viết nổi bật trên tạp chí | resources Zac Woodall → Đào Văn Lai |
| 22 | Ra mắt cổng thông tin web công cộng cho sách | resources Toby Nixon; Vikas Jain → Phạm Khuân; Lại Văn Lâm |
| 23 | Ra mắt chương trình truyền thông xã hội cho sách | resources Toby Nixon; Vikas Jain → Phạm Khuân; Lại Văn Lâm |
